Schedule from MS Project, 2010-03-22 to 2010-05-13, A marks actual dates.

## Calendars

- 标准: Mon-Fri 08:00-12:00, 13:00-17:00; Sat-Sun off. Exceptions (off unless hours are given): 2010-03-27 to 2010-03-28 08:00-12:00, 13:00-17:00, 2010-04-03 08:00-12:00, 13:00-17:00, 2010-04-17 08:00-12:00, 13:00-17:00, 2010-05-01 to 2010-05-02 08:00-12:00, 13:00-17:00.

## Resources

| Resource |
| --- |
| 冯晓云 |
| 朱利安 |
| 武亮 |
| 所有人 |

## Schedule

| ID | WBS | Task | Duration | Start | Finish | Predecessors | Complete | Remaining | Total slack | Free slack | Constraint | Deadline | Resources | Work | Actual work |
| --- | --- | --- | --- | --- | --- | --- | --- | --- | --- | --- | --- | --- | --- | --- | --- |
| 1 | 1 | **产品研发** | 10d? | 2010-03-22 A | 2010-03-31 |  | 17% | 8.26d? | 3d | 2d |  |  |  | 208h | 24h |
| 2 | 1.1 | 设计器导向功能 | 1d | 2010-03-22 A | 2010-03-22 A |  | 100% |  |  |  | start no earlier than 2010-03-22 |  | 冯晓云 | 8h | 8h |
| 3 | 1.2 | 设计器(用户模式与管理模式) | 1d? | 2010-03-23 A | 2010-03-23 A |  | 100% |  |  |  | start no earlier than 2010-03-23 |  | 冯晓云 | 8h | 8h |
| 4 | 1.3 | 友情链接组件 | 1d | 2010-03-23 A | 2010-03-23 A |  | 100% |  |  |  | start no earlier than 2010-03-23 |  | 冯晓云 | 8h | 8h |
| 5 | 1.4 | 内测环境部署 | 1d | 2010-03-24 A | 2010-03-24 A |  | 100% |  |  |  | start no earlier than 2010-03-24 | 2010-03-24 |  |  |  |
| 6 | 1.5 | 网站统计组件 | 2d | 2010-03-24 | 2010-03-25 |  |  |  | 9d |  | finish no earlier than 2010-03-25 |  | 冯晓云 | 16h |  |
| 7 | 1.6 | SEO设计及实现 | 3d | 2010-03-25 | 2010-03-27 |  |  |  | 5d |  | finish no earlier than 2010-03-27 |  | 冯晓云 | 24h |  |
| 8 | 1.7 | 系统模板,主题设计 | 4d | 2010-03-28 | 2010-03-31 |  |  |  | 3d |  | start no earlier than 2010-03-28 |  | 冯晓云; 朱利安 | 64h |  |
| 9 | 1.8 | 淘宝箱接口实现 | 2d | 2010-03-30 | 2010-03-31 |  |  |  | 1d |  | start no earlier than 2010-03-30 |  | 冯晓云 | 16h |  |
| 10 | 1.9 | 空间调研 | 8d | 2010-03-22 | 2010-03-29 |  |  |  | 5d |  | finish no earlier than 2010-03-29 |  | 武亮 | 64h |  |
| 11 | 2 | **内测** | 10d? | 2010-04-03 | 2010-04-15 | 1 |  |  | 1d | 0d |  |  |  | 160h |  |
| 12 | 2.1 | 功能测试 | 10d? | 2010-04-03 | 2010-04-15 |  |  |  | 1d |  | start no earlier than 2010-04-03 |  | 所有人 | 80h |  |
| 13 | 2.2 | bug修复 | 10d? | 2010-04-03 | 2010-04-15 |  |  |  | 1d |  | start no earlier than 2010-04-03 |  | 冯晓云 | 80h |  |
| 14 | 3 | **入驻淘宝箱** | 23d? | 2010-04-16 | 2010-05-13 | 11 |  |  | 0d |  |  |  |  | 312h |  |
| 15 | 3.1 | 入驻申请 | 1d | 2010-04-16 | 2010-04-16 |  |  |  | 22d |  | start no earlier than 2010-04-16 |  | 冯晓云 | 8h |  |
| 16 | 3.2 | 前期推广 | 22d? | 2010-04-17 | 2010-05-13 |  |  |  | 0d |  | start no earlier than 2010-04-17 |  | 所有人 | 176h |  |
| 17 | 3.3 | 公测 | 12d? | 2010-04-17 | 2010-05-01 |  |  |  | 10d |  | start no earlier than 2010-04-17 |  | 所有人 | 96h |  |
| 18 | 3.4 | 淘宝反馈,修订 | 3d? | 2010-05-03 | 2010-05-05 |  |  |  | 6d |  | finish no earlier than 2010-05-05 |  | 冯晓云 | 24h |  |
| 19 | 3.5 | 如果未通过,二次申请 | 1d? | 2010-05-04 | 2010-05-04 |  |  |  | 7d |  | start no earlier than 2010-05-04 |  | 冯晓云 | 8h |  |

Notes:
- 3: 用户模式： / 一般用户使用的视图(只能修改发布用户模板)/ 管理模式: / 管理员使用的视图(可以新增修改发布系统模板)
- 8: 系统模板-10个 / 系统主题-10个
